# Gitanga Mall Reticulation Project

Schedule from MS Project, 2026-08-24 to 2026-10-30, status date 2026-09-14, A marks actual dates.

## Calendars

- Standard: Mon-Fri 08:00-12:00, 13:00-17:00; Sat-Sun off. Exceptions (off unless hours are given): 2026-09-01 to 2026-10-31 08:00-13:00 ([Unnamed], recurring).

## Resources

| Resource |
| --- |
| Benedette Marigi |
| Arnold Onchere |
| Philip Kioko |
| Josphat Njuguna |
| Daniel Kimani |
| Meshack Keter |
| Client |
| Consultants |
| MC |
| Vanessa Ojukwu |

## Schedule

| ID | WBS | Task | Type | Duration | Start | Finish | Predecessors | Complete | Remaining | Total slack | Free slack | Constraint | Resources | Work | Actual work |
| --- | --- | --- | --- | --- | --- | --- | --- | --- | --- | --- | --- | --- | --- | --- | --- |
| 1 | 1 | **GITANGA MALL RETICULATION PROJECT** |  | 54.25d | 2026-08-24 A | 2026-10-30 |  | 1% | 53.78d | 0d |  |  |  | 2302h | 20.8h |
| 2 | 1.1 | **Milestones** |  | 14.62d | 2026-08-24 A | 2026-09-11 |  |  | 14.62d | 39.62d |  |  |  |  |  |
| 3 | 1.1.1 | Official project award | milestone | 0d | 2026-08-24 A | 2026-08-24 A |  | 100% |  |  |  |  | Client |  |  |
| 4 | 1.1.2 | Receipt of award letter | milestone | 0d | 2026-09-01 A | 2026-09-01 A |  | 100% |  |  |  | start no earlier than 2026-09-01 | Client |  |  |
| 5 | 1.1.3 | Advance payment | milestone | 0d | 2026-09-11 | 2026-09-11 |  |  |  | 39.62d |  | start no earlier than 2026-09-11 | Client |  |  |
| 6 | 1.2 | **Constraints** |  | 18.25d | 2026-08-28 | 2026-09-21 |  |  |  | 4.62d |  |  |  | 88h |  |
| 7 | 1.2.1 | Approval of tank location |  | 5d | 2026-08-28 | 2026-09-03 |  |  |  | 4.62d | 3.62d | start no earlier than 2026-08-28 | Consultants | 40h |  |
| 8 | 1.2.2 | Construction of tank farm plinth |  | 6d | 2026-09-14 | 2026-09-21 |  |  |  | 16.5d | 0.38d | start no earlier than 2026-09-14 | MC | 48h |  |
| 9 | 1.3 | **Preliminaries and Mobilization** |  | 8.62d | 2026-08-31 A | 2026-09-09 |  | 17% | 7.19d | 40.62d |  |  |  | 48h | 8h |
| 10 | 1.3.1 | Submission of shop drawings |  | 5d | 2026-08-31 | 2026-09-04 |  |  |  | 44.25d |  | start no earlier than 2026-08-31 | Arnold Onchere | 40h |  |
| 11 | 1.3.2 | Site mobilisation |  | 1d | 2026-09-09 A | 2026-09-09 A | 3, 7 | 100% |  |  |  | start no earlier than 2026-09-09 | Philip Kioko | 8h | 8h |
| 12 | 1.4 | **Procurement** |  | 31.12d | 2026-09-07 A | 2026-10-14 |  |  | 31.02d | 12.5d |  |  |  | 1426h | 4.8h |
| 13 | 1.4.1 | Pipes and fittings |  | 6d | 2026-09-07 A | 2026-09-14 |  | 10% | 5.4d | 16.12d | 0d | start no earlier than 2026-09-07 | Josphat Njuguna | 48h | 4.8h |
| 14 | 1.4.2 | Valves |  | 6d | 2026-09-07 | 2026-09-14 |  |  |  | 37.62d | 2d | start no earlier than 2026-09-07 | Josphat Njuguna | 48h |  |
| 15 | 1.4.3 | **Equipment** |  | 6d | 2026-09-07 | 2026-09-14 |  |  |  |  |  |  |  | 240h |  |
| 16 | 1.4.3.1 | Vaporizer |  | 6d | 2026-09-14 | 2026-09-21 | 13 |  |  | 31.62d |  | start no earlier than 2026-09-07 | Josphat Njuguna | 48h |  |
| 17 | 1.4.3.2 | Regulators, gauges, solenoid valves |  | 6d | 2026-09-07 | 2026-09-14 |  |  |  | 37.62d | 2d | start no earlier than 2026-09-07 | Josphat Njuguna | 48h |  |
| 18 | 1.4.3.3 | Oil Separator |  | 6d | 2026-09-07 | 2026-09-14 |  |  |  | 37.62d |  | start no earlier than 2026-09-07 | Josphat Njuguna | 48h |  |
| 19 | 1.4.3.4 | Gas manifold |  | 6d | 2026-09-07 | 2026-09-14 |  |  |  | 37.62d |  | start no earlier than 2026-09-07 | Josphat Njuguna | 48h |  |
| 20 | 1.4.3.5 | Bulk tank |  | 6d | 2026-09-14 | 2026-09-21 | 13 |  |  | 16.12d | 0d | start no earlier than 2026-09-07 | Josphat Njuguna | 48h |  |
| 21 | 1.4.4 | **Pipe Supports & Brackets** |  | 6d | 2026-09-07 | 2026-09-14 |  |  |  |  |  |  |  | 48h |  |
| 22 | 1.4.4.1 | Clamps, brackets, bolts, anchor bolts |  | 6d | 2026-09-07 | 2026-09-14 |  |  |  | 37.62d |  | start no earlier than 2026-09-07 | Josphat Njuguna | 48h |  |
| 23 | 1.4.5 | **Finishes, Safety & Labelling** |  | 6d | 2026-09-07 | 2026-09-14 |  |  |  |  |  |  |  | 96h |  |
| 24 | 1.4.5.1 | Signages & labels |  | 6d | 2026-09-07 | 2026-09-14 |  |  |  | 37.62d |  | start no earlier than 2026-09-07 | Josphat Njuguna | 48h |  |
| 25 | 1.4.5.2 | Paints |  | 6d | 2026-09-07 | 2026-09-14 |  |  |  | 37.62d |  | start no earlier than 2026-09-07 | Josphat Njuguna | 48h |  |

| ID | WBS | Task | Duration | Start | Finish | Predecessors | Complete | Remaining | Total slack | Free slack | Constraint | Resources | Work | Actual work |
| --- | --- | --- | --- | --- | --- | --- | --- | --- | --- | --- | --- | --- | --- | --- |
| 26 | 1.4.6 | **Instrumentation** | 31.12d | 2026-09-07 | 2026-10-14 |  |  |  | 0d |  |  |  | 946h |  |
| 27 | 1.4.6.1 | Smart meters | 4w | 2026-09-07 | 2026-10-03 |  |  |  | 5.62d |  | start no earlier than 2026-09-07 | Meshack Keter | 180h |  |
| 28 | 1.4.6.2 | Gas detectors | 5w | 2026-09-07 | 2026-10-10 |  |  |  | 0d |  | start no earlier than 2026-09-07 | Meshack Keter | 225h |  |
| 29 | 1.4.6.3 | Flow meters | 5w | 2026-09-07 | 2026-10-10 |  |  |  | 0d |  | start no earlier than 2026-09-07 | Meshack Keter | 225h |  |
| 30 | 1.4.6.4 | Earthing Material | 2w | 2026-09-07 | 2026-09-19 |  |  |  | 16.88d |  | start no earlier than 2026-09-07 | Meshack Keter | 90h |  |
| 31 | 1.4.6.5 | Cables ( Electrical & Instrumentation) | 2w | 2026-09-07 | 2026-09-19 |  |  |  | 16.88d | 0d | start no earlier than 2026-09-07 | Meshack Keter | 90h |  |
| 32 | 1.4.6.6 | Distribution Board | 7d | 2026-09-07 | 2026-09-15 |  |  |  | 21.12d |  | start no earlier than 2026-09-07 | Meshack Keter | 56h |  |
| 33 | 1.4.6.7 | Cable Trays | 7d | 2026-09-07 | 2026-09-15 |  |  |  | 21.12d | 0d | start no earlier than 2026-09-07 | Meshack Keter | 56h |  |
| 34 | 1.4.6.8 | Site delivery of Material | 3d | 2026-10-12 | 2026-10-14 | 27, 28, 29, 30, 31, 32, 33 |  |  | 0d |  |  | Meshack Keter | 24h |  |
| 35 | 1.5 | **Construction** | 33.12d | 2026-09-09 A | 2026-10-20 |  | 1% | 32.78d | 8.5d |  |  |  | 584h | 8h |
| 36 | 1.5.1 | **Basement** | 11d | 2026-09-09 A | 2026-09-22 |  | 5% | 10.5d | 30.62d |  |  |  | 120h | 8h |
| 37 | 1.5.1.1 | Pipe routing and welding | 5d | 2026-09-09 A | 2026-09-15 | 11SS, 13SS, 7 | 20% | 4d | 16.12d | 0d | finish no earlier than 2026-09-12 | Philip Kioko | 40h | 8h |
| 38 | 1.5.1.2 | Fixing of pipe supports | 5d | 2026-09-09 | 2026-09-15 | 37SS, 21SS |  |  | 23.12d | 0d |  | Philip Kioko | 40h |  |
| 39 | 1.5.1.3 | Installation of ball valves and pipe fittings | 5d | 2026-09-09 | 2026-09-15 | 14SS, 17SS, 38SS |  |  | 36.62d |  |  | Philip Kioko | 40h |  |
| 40 | 1.5.1.4 | Painting of pipes | 7d | 2026-09-14 | 2026-09-22 | 37SS+4d |  |  | 15.62d | 0d |  |  |  |  |
| 41 | 1.5.2 | **Ground Floor** | 10d | 2026-09-15 | 2026-09-28 |  |  |  | 16.12d |  |  |  | 96h |  |
| 42 | 1.5.2.1 | Pipe routing and welding | 4d | 2026-09-15 | 2026-09-19 | 37 |  |  | 16.12d | 0d |  | Philip Kioko | 32h |  |
| 43 | 1.5.2.2 | Fixing of pipe supports | 4d | 2026-09-15 | 2026-09-19 | 42SS |  |  | 32.62d | 0d |  | Philip Kioko | 32h |  |
| 44 | 1.5.2.3 | Installation of ball valves and pipe fittings | 4d | 2026-09-15 | 2026-09-19 | 42SS, 43SS |  |  | 32.62d |  |  | Philip Kioko | 32h |  |
| 45 | 1.5.2.4 | Painting of pipes | 4d | 2026-09-22 | 2026-09-28 | 40, 42 |  |  | 15.62d | 0d |  |  |  |  |
| 46 | 1.5.3 | **1st Floor** | 10d | 2026-09-19 | 2026-10-02 |  |  |  | 15.62d |  |  |  | 72h |  |
| 47 | 1.5.3.1 | Pipe routing and welding | 3d | 2026-09-19 | 2026-09-23 | 42 |  |  | 16.12d | 0d |  | Philip Kioko | 24h |  |
| 48 | 1.5.3.2 | Fixing of pipe supports | 3d | 2026-09-19 | 2026-09-23 | 47SS |  |  | 16.12d | 0d |  | Philip Kioko | 24h |  |
| 49 | 1.5.3.3 | Installation of ball valves and pipe fittings | 3d | 2026-09-19 | 2026-09-23 | 48SS |  |  | 16.12d | 0d |  | Philip Kioko | 24h |  |
| 50 | 1.5.3.4 | Painting of pipes | 4d | 2026-09-28 | 2026-10-02 | 45, 47 |  |  | 15.62d | 0d |  |  |  |  |

| ID | WBS | Task | Duration | Start | Finish | Predecessors | Total slack | Free slack | Resources | Work |
| --- | --- | --- | --- | --- | --- | --- | --- | --- | --- | --- |
| 51 | 1.5.4 | **2nd Floor** | 11d | 2026-09-23 | 2026-10-07 |  | 16.12d |  |  | 96h |
| 52 | 1.5.4.1 | Pipe routing and welding | 4d | 2026-09-23 | 2026-09-29 | 49 | 16.12d | 0d | Philip Kioko | 32h |
| 53 | 1.5.4.2 | Fixing of pipe supports | 4d | 2026-09-23 | 2026-09-29 | 52SS | 25.62d | 0d | Philip Kioko | 32h |
| 54 | 1.5.4.3 | Installation of ball valves and pipe fittings | 4d | 2026-09-23 | 2026-09-29 | 53SS | 25.62d |  | Philip Kioko | 32h |
| 55 | 1.5.4.4 | Painting of pipes | 4d | 2026-10-02 | 2026-10-07 | 50, 52 | 15.62d | 0d |  |  |
| 56 | 1.5.5 | **External Works** | 16d | 2026-09-21 | 2026-10-10 |  | 15.62d |  |  | 112h |
| 57 | 1.5.5.1 | Installation of tank | 7d | 2026-09-21 | 2026-09-30 | 8, 20 | 16.12d | 0d | Philip Kioko | 56h |
| 58 | 1.5.5.2 | Installation of vaporizer | 7d | 2026-09-21 | 2026-09-30 | 57SS | 24.62d |  | Philip Kioko | 56h |
| 59 | 1.5.5.3 | Painting of tank | 3d | 2026-10-07 | 2026-10-10 | 55, 57 | 15.62d |  |  |  |
| 60 | 1.5.6 | **Cable routing** | 3d | 2026-09-15 | 2026-09-18 |  | 23.12d |  |  | 24h |
| 61 | 1.5.6.1 | Cable trays | 3d | 2026-09-15 | 2026-09-18 | 38, 33 | 23.12d | 0d | Daniel Kimani | 24h |
| 62 | 1.5.7 | **Equipment Installation** | 24.12d | 2026-09-18 | 2026-10-19 |  | 0d |  |  | 32h |
| 63 | 1.5.7.1 | Gas metres | 1d | 2026-10-15 | 2026-10-15 | 27, 34 | 0d |  | Daniel Kimani | 8h |
| 64 | 1.5.7.2 | Gas detectors | 1d | 2026-10-16 | 2026-10-16 | 63 | 0d |  | Daniel Kimani | 8h |
| 65 | 1.5.7.3 | Solenoid valve | 1d | 2026-10-17 | 2026-10-19 | 64 | 0d |  | Daniel Kimani | 8h |
| 66 | 1.5.7.4 | Distribution Board | 1d | 2026-09-18 | 2026-09-19 | 61 | 23.12d |  | Daniel Kimani | 8h |
| 67 | 1.5.8 | **Cabling & Termination** | 23.88d | 2026-09-21 | 2026-10-20 |  | 0d |  |  | 32h |
| 68 | 1.5.8.1 | Gas Detectors | 1d | 2026-09-21 | 2026-09-21 | 31 | 19.88d | 0d | Daniel Kimani | 8h |
| 69 | 1.5.8.2 | Vaporiser | 1d | 2026-09-22 | 2026-09-22 | 68 | 19.88d | 0d | Daniel Kimani | 8h |
| 70 | 1.5.8.3 | Solenoid Valve | 0.5d | 2026-09-23 | 2026-09-23 | 69 | 19.88d | 0d | Daniel Kimani | 4h |
| 71 | 1.5.8.4 | 4 Way Distribution Board | 0.5d | 2026-09-23 | 2026-09-23 | 70 | 19.88d |  | Daniel Kimani | 4h |
| 72 | 1.5.8.5 | Earthing & Equipment Bonding | 1d | 2026-10-19 | 2026-10-20 | 71, 61, 63, 64, 65, 66, 68, 69, 70 | 0d |  | Daniel Kimani | 8h |
| 73 | 1.6 | **QA/QC inspection** | 18.12d | 2026-09-29 | 2026-10-21 |  | 0d |  |  | 32h |
| 74 | 1.6.1 | Pipeline pressure testing | 2d | 2026-09-29 | 2026-10-01 | 37, 42, 47, 52 | 16.12d |  | Vanessa Ojukwu | 16h |
| 75 | 1.6.2 | Tank hydrotest | 1d | 2026-09-30 | 2026-10-01 | 57 | 16.12d |  | Vanessa Ojukwu | 8h |
| 76 | 1.6.3 | Instrumentation QA/QC Inspection | 1d | 2026-10-20 | 2026-10-21 | 72 | 0d |  | Daniel Kimani | 8h |

| ID | WBS | Task | Duration | Start | Finish | Predecessors | Total slack | Resources | Work |
| --- | --- | --- | --- | --- | --- | --- | --- | --- | --- |
| 77 | 1.7 | **Commissioning and Handover** | 7.5d | 2026-10-21 | 2026-10-30 |  | 0d |  | 124h |
| 78 | 1.7.1 | Loop checks | 0.5d | 2026-10-21 | 2026-10-21 | 73 | 0d | Daniel Kimani | 4h |
| 79 | 1.7.2 | Smart Metering Software configuration | 2d | 2026-10-21 | 2026-10-23 | 78 | 0d | Daniel Kimani | 16h |
| 80 | 1.7.3 | Automatic shut Off system | 1d | 2026-10-23 | 2026-10-26 | 79 | 0d | Daniel Kimani | 8h |
| 81 | 1.7.4 | Vaporiser | 1d | 2026-10-26 | 2026-10-27 | 80 | 0d | Daniel Kimani; Philip Kioko | 16h |
| 82 | 1.7.5 | LPG Tank | 1d | 2026-10-27 | 2026-10-28 | 81, 78, 79, 80 | 0d | Philip Kioko; Vanessa Ojukwu | 16h |
| 83 | 1.7.6 | Documentation, Training & Handover | 2d | 2026-10-28 | 2026-10-30 | 82 | 0d | Benedette Marigi; Daniel Kimani; Philip Kioko; Vanessa Ojukwu | 64h |
